# MXXXXXX - Automation Project

How a schedule from MS Project changed from version to version. A marks actual dates.

## Version 1 (saved 2024-07-16)

| ID | WBS | Task | Duration | Start | Finish | Predecessors | Total float |
| --- | --- | --- | --- | --- | --- | --- | --- |
| 1 |  | Project Kickoff | 1d | 2024-06-24 | 2024-06-24 |  | -4d |
| 2 | 2 | **Site Survey / Site Dicovery** | 3d | 2024-06-25 | 2024-06-27 | 1 | -4d |
| 3 | 2.1 | **Off Site** | 3d | 2024-06-25 | 2024-06-27 |  | -4d |
| 4 |  | Hardware Requirement | 2d | 2024-06-25 | 2024-06-26 |  | -3d |
| 5 |  | Software Requirement | 3d | 2024-06-25 | 2024-06-27 |  | -4d |
| 6 | 2.2 | **Site Visit** | 2d | 2024-06-25 | 2024-06-26 |  | -3d |
| 7 |  | Hardware Requirement | 1d | 2024-06-25 | 2024-06-25 |  | -2d |
| 8 |  | Software Requirement | 2d | 2024-06-25 | 2024-06-26 |  | -3d |
| 9 | 3 | **Project Documentation** | 10d? | 2024-06-24 | 2024-07-05 | 2 | 0d |
| 10 | 3.1 | **Process and Mechanical (P&M) Design** | 3d | 2024-06-24 | 2024-06-26 |  | 0d |
| 11 |  | Process Flow Diagram (PFD) | 1d? | 2024-06-24 | 2024-06-24 |  |  |
| 12 |  | Process and Instrumentation Diagram (P&ID) | 1d? | 2024-06-24 | 2024-06-24 |  |  |
| 13 |  | Instrument Index | 1d? | 2024-06-24 | 2024-06-24 |  |  |
| 14 | 3.1.4 | **Review Process** | 3d | 2024-06-24 | 2024-06-26 |  |  |
| 15 |  | Review 1 | 1d? | 2024-06-24 | 2024-06-24 |  |  |
| 16 |  | Ammend 1 | 1d? | 2024-06-24 | 2024-06-24 |  |  |
| 17 |  | P&M Approval | 1d? | 2024-06-24 | 2024-06-24 |  |  |
| 18 | 3.2 | **Automation and Control (A&C) Design** | 7d? | 2024-06-24 | 2024-07-02 |  | 0d |
| 19 | 3.2.1 | **Hardware Specifications** | 3d | 2024-06-28 | 2024-07-02 |  | 23d |
| 20 |  | Device List | 1d | 2024-06-28 | 2024-06-28 |  | 25d |
| 21 |  | IO List | 3d | 2024-06-28 | 2024-07-02 |  | 23d |
| 22 |  | Controller Specification | 2d | 2024-06-28 | 2024-07-01 |  | 24d |
| 23 |  | Network Device Layout / Topology | 2d | 2024-06-28 | 2024-07-01 |  | 24d |
| 24 | 3.2.2 | **Software Specifications** | 5d? | 2024-06-24 | 2024-06-28 |  | 0d |
| 25 |  | Control Functional Specification | 1d? | 2024-06-28 | 2024-06-28 |  | 25d |
| 26 |  | Alarm Handling | 1d? | 2024-06-28 | 2024-06-28 |  | 25d |
| 27 |  | Network Connections | 1d? | 2024-06-24 | 2024-06-24 |  |  |
| 28 | 3.2.3 | **Review Process** | 3d | 2024-06-24 | 2024-06-26 |  |  |
| 29 |  | Review 1 | 1d? | 2024-06-24 | 2024-06-24 |  |  |
| 30 |  | Ammend 1 | 1d? | 2024-06-24 | 2024-06-24 |  |  |
| 31 | 3.3 | **Electrical Deisgn** | 10d? | 2024-06-24 | 2024-07-05 |  | 0d |
| 32 |  | Load Calculation / Single Line | 5d | 2024-06-24 | 2024-06-28 |  |  |
| 33 |  | Electrical Schematics | 10d | 2024-06-24 | 2024-07-05 |  |  |
| 34 |  | Termination Drawings | 5d | 2024-06-24 | 2024-06-28 |  |  |
| 35 |  | General Arrangement Drawings (GAs) | 5d | 2024-06-24 | 2024-06-28 |  |  |
| 36 |  | Cable Schedule | 3d | 2024-06-24 | 2024-06-26 |  |  |
| 37 |  | Cable Interconnection List | 2d | 2024-06-24 | 2024-06-25 |  |  |
| 38 |  | Bill Of Materials (BOM) | 2d | 2024-06-24 | 2024-06-25 |  |  |
| 39 | 3.3.8 | **Review Process** | 3d | 2024-06-24 | 2024-06-26 |  |  |
| 40 |  | Review 1 | 1d? | 2024-06-24 | 2024-06-24 |  |  |
| 41 |  | Ammend 1 | 1d? | 2024-06-24 | 2024-06-24 |  |  |
| 42 |  | Procurement | 30d | 2024-06-24 | 2024-08-02 |  | 0d |
| 43 | 5 | **Software Development** | 1d? | 2024-06-24 | 2024-06-24 |  | 29d |
| 44 |  | Software Reverse Engineering | 1d? | 2024-06-24 | 2024-06-24 |  | 29d |
| 45 |  | Device Block Development | 1d? | 2024-06-24 | 2024-06-24 |  | 29d |
| 46 |  | Control Block Development | 1d? | 2024-06-24 | 2024-06-24 |  | 29d |
| 47 |  | HMI Development | 1d? | 2024-06-24 | 2024-06-24 |  | 29d |
| 48 |  | HMI Integration | 1d? | 2024-06-24 | 2024-06-24 |  | 29d |
| 49 |  | Panel Fabrication | 1d? | 2024-06-24 | 2024-06-24 |  | 29d |
| 50 |  | Internal FAT | 1d? | 2024-06-24 | 2024-06-24 |  |  |
| 51 |  | Client FAT | 1d? | 2024-06-24 | 2024-06-24 |  |  |
| 52 | 9 | **Installation** | 1d? | 2024-06-24 | 2024-06-24 |  | 29d |
| 53 |  | Mount Panel | 1d? | 2024-06-24 | 2024-06-24 |  | 29d |
| 54 |  | Cable Pulling | 1d? | 2024-06-24 | 2024-06-24 |  | 29d |
| 55 |  | Panel Wiring | 1d? | 2024-06-24 | 2024-06-24 |  | 29d |
| 56 |  | Power up | 1d? | 2024-06-24 | 2024-06-24 |  | 29d |
| 57 | 10 | **Commissioning** | 3d? | 2024-06-24 | 2024-06-26 |  | 27d |
| 58 |  | Pre Commissioning | 1d? | 2024-06-24 | 2024-06-24 |  | 27d |
| 59 |  | Function Testing | 1d? | 2024-06-25 | 2024-06-25 | 58 | 27d |
| 60 |  | Site Acceptance Testing | 1d? | 2024-06-26 | 2024-06-26 | 59 | 27d |

## Version 2 (saved 2024-07-16)

Last finish 2024-08-02 → 2025-03-05 (+215d).

Added:

| ID | Task | Duration | Start | Finish | Predecessors |
| --- | --- | --- | --- | --- | --- |
| 25 | Communication Register | 3d | 2024-08-02 | 2024-08-06 |  |
| 26 | SAT Procedure | 1d | 2024-08-22 | 2024-08-22 | 22 |
| 27 | Review, Ammend and Approval | 5d | 2024-08-23 | 2024-08-29 | 16, 21 |
| 30 | Installation Layout | 5d | 2024-08-30 | 2024-09-05 |  |
| 31 | Cable Tray Layout | 5d | 2024-08-30 | 2024-09-05 |  |
| 37 | Earthing Connection | 2d | 2024-09-06 | 2024-09-09 | 34 |
| 39 | Review, Ammend and Approval | 5d | 2024-08-30 | 2024-09-05 |  |
| 42 | **Controller Development** | 5d | 2024-08-30 | 2024-09-05 |  |
| 45 | **HMI Development** | 5d | 2024-08-30 | 2024-09-05 |  |
| 48 | Software Testing | 5d | 2024-09-06 | 2024-09-12 | 42, 45 |
| 50 | Ordering Process | 5d | 2024-09-13 | 2024-09-19 |  |
| 51 | Lead Time | 60d | 2024-09-13 | 2024-12-05 |  |
| 53 | Construction | 30d | 2024-10-25 | 2024-12-05 | 50, 49FF |
| 56 | **Shipment and Delivery** | 14d | 2024-12-18 | 2025-01-06 | 52 |
| 57 | Packing | 1d | 2024-12-18 | 2024-12-18 |  |
| 58 | Pickup | 1d | 2024-12-18 | 2024-12-18 |  |
| 59 | Transit | 14d | 2024-12-18 | 2025-01-06 |  |
| 60 | Receive | 1d | 2024-12-18 | 2024-12-18 |  |
| 69 | Production Run | 2d | 2025-01-27 | 2025-01-28 |  |
| 71 | Delivery And Sign-off | 1d? | 2025-03-05 | 2025-03-05 | 65 |

Removed: 15 Review 1; 16 Ammend 1; 17 P&M Approval; 28 Review Process; 29 Review 1; 30 Ammend 1; 39 Review Process; 40 Review 1; 41 Ammend 1

Changed:

| ID | Task | Start | Finish | Duration | Total float | Predecessors | Other |
| --- | --- | --- | --- | --- | --- | --- | --- |
| 3 | **Off Site** |  | 2024-06-27 → 2024-06-25 (-2d) | 3d → 1d | -4d → 0d |  |  |
| 4 | Hardware Requirement |  | 2024-06-26 → 2024-06-25 (-1d) | 2d → 1d | -3d → 0d |  |  |
| 5 | Software Requirement |  | 2024-06-27 → 2024-06-25 (-2d) | 3d → 1d | -4d → 0d |  |  |
| 6 | **Site Visit** | 2024-06-25 → 2024-06-26 (+1d) | 2024-06-26 → 2024-06-27 (+1d) |  | -3d → 0d | none → 3 |  |
| 7 | Hardware Requirement | 2024-06-25 → 2024-06-26 (+1d) | 2024-06-25 → 2024-06-26 (+1d) |  | -2d → 1d |  |  |
| 8 | Software Requirement | 2024-06-25 → 2024-06-26 (+1d) | 2024-06-26 → 2024-06-27 (+1d) |  | -3d → 0d |  |  |
| 9 | **Project Documentation** | 2024-06-24 → 2024-06-28 (+4d) | 2024-07-05 → 2024-09-12 (+69d) | 10d? → 55d |  |  |  |
| 10 | **Process and Mechanical (P&M) Design** | 2024-06-24 → 2024-06-28 (+4d) | 2024-06-26 → 2024-08-01 (+36d) | 3d → 25d |  |  |  |
| 11 | Process Flow Diagram (PFD) | 2024-06-24 → 2024-06-28 (+4d) | 2024-06-24 → 2024-07-04 (+10d) | 1d? → 5d | none → 0d |  |  |
| 12 | Process and Instrumentation Diagram (P&ID) | 2024-06-24 → 2024-07-05 (+11d) | 2024-06-24 → 2024-07-18 (+24d) | 1d? → 10d | none → 0d | none → 11 |  |
| 13 | Instrument Index | 2024-06-24 → 2024-07-19 (+25d) | 2024-06-24 → 2024-07-25 (+31d) | 1d? → 5d | none → 0d | none → 12 |  |
| 14 | Review, Ammend and Approval | 2024-06-24 → 2024-07-26 (+32d) | 2024-06-26 → 2024-08-01 (+36d) | 3d → 5d | none → 0d | none → 12, 13 | was named Review Process |
| 15 | **Automation and Control (A&C) Design** | 2024-06-24 → 2024-08-02 (+39d) | 2024-07-02 → 2024-08-29 (+58d) | 7d? → 20d |  | none → 10 |  |
| 16 | **Hardware Specifications** | 2024-06-28 → 2024-08-02 (+35d) | 2024-07-02 → 2024-08-12 (+41d) | 3d → 7d | 23d → 8d |  |  |
| 17 | Device List | 2024-06-28 → 2024-08-02 (+35d) | 2024-06-28 → 2024-08-05 (+38d) | 1d → 2d | 25d → 8d |  |  |
| 18 | IO List | 2024-06-28 → 2024-08-06 (+39d) | 2024-07-02 → 2024-08-08 (+37d) |  | 23d → 8d | none → 17 |  |
| 19 | Network Device Layout / Topology | 2024-06-28 → 2024-08-02 (+35d) | 2024-07-01 → 2024-08-08 (+38d) | 2d → 5d | 24d → 8d |  |  |
| 20 | Controller and Device Specification | 2024-06-28 → 2024-08-09 (+42d) | 2024-07-01 → 2024-08-12 (+42d) |  | 24d → 8d | none → 18, 19 | was named Controller Specification |
| 21 | **Software Specifications** | 2024-06-24 → 2024-08-02 (+39d) | 2024-06-28 → 2024-08-22 (+55d) | 5d? → 15d |  |  |  |
| 22 | Control Functional Specification | 2024-06-28 → 2024-08-02 (+35d) | 2024-06-28 → 2024-08-21 (+54d) | 1d? → 14d | 25d → 0d |  |  |
| 23 | Network Connection List | 2024-06-24 → 2024-08-02 (+39d) | 2024-06-24 → 2024-08-08 (+45d) | 1d? → 5d | none → 10d |  | was named Network Connections |
| 24 | Alarms Register | 2024-06-28 → 2024-08-02 (+35d) | 2024-06-28 → 2024-08-06 (+39d) | 1d? → 3d | 25d → 12d |  | was named Alarm Handling |
| 28 | **Electrical Deisgn** | 2024-06-24 → 2024-08-30 (+67d) | 2024-07-05 → 2024-09-12 (+69d) | 10d? → 10d |  | none → 15 |  |
| 29 | Single Line Diagram | 2024-06-24 → 2024-08-30 (+67d) | 2024-06-28 → 2024-09-05 (+69d) |  | none → 5d |  | was named Load Calculation / Single Line |
| 32 | Electrical Schematics | 2024-06-24 → 2024-08-30 (+67d) | 2024-07-05 → 2024-09-12 (+69d) |  | none → 0d |  |  |
| 33 | Termination Drawings | 2024-06-24 → 2024-08-30 (+67d) | 2024-06-28 → 2024-09-05 (+69d) |  | none → 5d |  |  |
| 34 | General Arrangement Drawings (GAs) | 2024-06-24 → 2024-08-30 (+67d) | 2024-06-28 → 2024-09-05 (+69d) |  | none → 2d |  |  |
| 35 | Cable Schedule | 2024-06-24 → 2024-09-06 (+74d) | 2024-06-26 → 2024-09-10 (+76d) |  | none → 2d | none → 34 |  |
| 36 | Cable Interconnection List | 2024-06-24 → 2024-09-06 (+74d) | 2024-06-25 → 2024-09-09 (+76d) |  | none → 3d | none → 34 |  |
| 38 | Bill Of Materials (BOM) | 2024-06-24 → 2024-08-30 (+67d) | 2024-06-25 → 2024-09-02 (+69d) |  | none → 8d |  |  |
| 40 | **Software Development** | 2024-06-24 → 2024-08-30 (+67d) | 2024-06-24 → 2024-09-12 (+80d) | 1d? → 10d | 29d → 0d | none → 10, 15 |  |
| 41 | Software Reverse Engineering | 2024-06-24 → 2024-08-30 (+67d) | 2024-06-24 → 2024-09-12 (+80d) | 1d? → 10d | 29d → 124d |  |  |
| 43 | Device Block Development | 2024-06-24 → 2024-08-30 (+67d) | 2024-06-24 → 2024-09-05 (+73d) | 1d? → 5d | 29d → none |  |  |
| 44 | Control Block Development | 2024-06-24 → 2024-08-30 (+67d) | 2024-06-24 → 2024-09-05 (+73d) | 1d? → 5d | 29d → 124d |  |  |
| 46 | Interfacing | 2024-06-24 → 2024-08-30 (+67d) | 2024-06-24 → 2024-09-05 (+73d) | 1d? → 5d | 29d → 124d |  | was named HMI Development |
| 47 | UI Development | 2024-06-24 → 2024-08-30 (+67d) | 2024-06-24 → 2024-09-05 (+73d) | 1d? → 5d | 29d → 124d |  | was named HMI Integration |
| 49 | **Procurement** | 2024-06-24 → 2024-09-13 (+81d) | 2024-08-02 → 2024-12-05 (+125d) | 30d → 60d |  | none → 9 |  |
| 52 | **Panel Fabrication** | 2024-06-24 → 2024-10-25 (+123d) | 2024-06-24 → 2024-12-17 (+176d) | 1d? → 38d | 29d → 0d |  |  |
| 54 | Internal FAT | 2024-06-24 → 2024-12-06 (+165d) | 2024-06-24 → 2024-12-12 (+171d) | 1d? → 5d | none → 0d | none → 53 |  |
| 55 | Client FAT | 2024-06-24 → 2024-12-13 (+172d) | 2024-06-24 → 2024-12-17 (+176d) | 1d? → 3d | none → 0d | none → 54 |  |
| 61 | **Installation** | 2024-06-24 → 2025-01-07 (+197d) | 2024-06-24 → 2025-01-24 (+214d) | 1d? → 14d | 29d → 0d | none → 56 |  |
| 62 | Panel Mounting | 2024-06-24 → 2025-01-07 (+197d) | 2024-06-24 → 2025-01-13 (+203d) | 1d? → 5d | 29d → 9d |  | was named Mount Panel |
| 63 | Cable Pulling | 2024-06-24 → 2025-01-07 (+197d) | 2024-06-24 → 2025-01-24 (+214d) | 1d? → 14d | 29d → 0d |  |  |
| 64 | Panel Terminations | 2024-06-24 → 2025-01-07 (+197d) | 2024-06-24 → 2025-01-20 (+210d) | 1d? → 10d | 29d → 4d |  | was named Panel Wiring |
| 65 | **Commissioning** | 2024-06-24 → 2025-01-27 (+217d) | 2024-06-26 → 2025-03-04 (+251d) | 3d? → 27d | 27d → 0d | none → 61 |  |
| 66 | Power up | 2024-06-24 → 2025-01-27 (+217d) | 2024-06-24 → 2025-01-27 (+217d) | 1d? → 1d | 29d → 26d |  |  |
| 67 | Pre Commissioning | 2024-06-24 → 2025-01-27 (+217d) | 2024-06-24 → 2025-02-13 (+234d) | 1d? → 14d | 27d → 0d |  |  |
| 68 | Function Testing | 2024-06-25 → 2025-02-14 (+234d) | 2024-06-25 → 2025-02-18 (+238d) | 1d? → 3d | 27d → 0d |  |  |
| 70 | Site Acceptance Testing | 2024-06-26 → 2025-02-19 (+238d) | 2024-06-26 → 2025-03-04 (+251d) | 1d? → 10d | 27d → 0d |  |  |
